| wbs_id | project_id | phase_id | task_name | owner_role | planned_start | planned_finish | deliverable | status |
| --- | --- | --- | --- | --- | --- | --- | --- | --- |
| WBS001 | ECM-2026 | P01 | 明确可研目标、范围与边界 | PM | 2026-02-01 | 2026-02-03 | 明确可研目标、范围与边界 | 计划完成日期已到，待确认 |
| WBS002 | ECM-2026 | P01 | 建立相关方清单与访谈计划 | PDM | 2026-02-04 | 2026-02-06 | 建立相关方清单与访谈计划 | 计划完成日期已到，待确认 |
| WBS003 | ECM-2026 | P01 | 评审并发布可研工作方案 | PGM | 2026-02-07 | 2026-02-10 | 评审并发布可研工作方案 | 计划完成日期已到，待确认 |
| WBS004 | ECM-2026 | P01 | 完成业务可行性与需求价值分析 | PDM | 2026-02-01 | 2026-03-18 | 完成业务可行性与需求价值分析 | 计划完成日期已到，待确认 |
| WBS005 | ECM-2026 | P01 | 完成技术路线与系统边界论证 | TM | 2026-03-19 | 2026-05-03 | 完成技术路线与系统边界论证 | 计划完成日期已到，待确认 |
| WBS006 | ECM-2026 | P01 | 测算投资、成本与预期收益 | PM | 2026-05-04 | 2026-06-18 | 测算投资、成本与预期收益 | 计划完成日期已到，待确认 |
| WBS007 | ECM-2026 | P01 | 形成实施路径、资源与风险建议 | PM | 2026-06-19 | 2026-08-03 | 形成实施路径、资源与风险建议 | 计划完成日期已到，待确认 |
| WBS008 | ECM-2026 | P01 | 汇编可研报告并组织评审 | PGM | 2026-08-04 | 2026-09-18 | 汇编可研报告并组织评审 | 进行中（待确认） |
| WBS009 | ECM-2026 | P01 | 梳理合同业务组织与职责 | PDM | 2026-02-11 | 2026-03-10 | 梳理合同业务组织与职责 | 计划完成日期已到，待确认 |
| WBS010 | ECM-2026 | P01 | 盘点合同全生命周期业务流程 | PDM | 2026-03-11 | 2026-04-07 | 盘点合同全生命周期业务流程 | 计划完成日期已到，待确认 |
| WBS011 | ECM-2026 | P01 | 盘点既有系统、接口与数据 | TM | 2026-04-08 | 2026-05-05 | 盘点既有系统、接口与数据 | 计划完成日期已到，待确认 |
| WBS012 | ECM-2026 | P01 | 访谈业务部门并形成痛点清单 | PDM | 2026-05-06 | 2026-06-02 | 访谈业务部门并形成痛点清单 | 计划完成日期已到，待确认 |
| WBS013 | ECM-2026 | P01 | 确认现状流程、问题与改进机会基线 | PM | 2026-06-03 | 2026-06-30 | 确认现状流程、问题与改进机会基线 | 计划完成日期已到，待确认 |
| WBS014 | ECM-2026 | P02 | 制定项目治理、会议与报告机制 | PM | 2026-07-01 | 2026-07-12 | 制定项目治理、会议与报告机制 | 计划完成日期已到，待确认 |
| WBS015 | ECM-2026 | P02 | 制定需求分级、跟踪与变更规范 | PDM | 2026-07-13 | 2026-07-24 | 制定需求分级、跟踪与变更规范 | 计划完成日期已到，待确认 |
| WBS016 | ECM-2026 | P02 | 制定设计、编码与代码评审规范 | TM | 2026-07-25 | 2026-08-06 | 制定设计、编码与代码评审规范 | 计划完成日期已到，待确认 |
| WBS017 | ECM-2026 | P02 | 制定测试、缺陷与质量门禁规范 | QA | 2026-08-07 | 2026-08-18 | 制定测试、缺陷与质量门禁规范 | 计划完成日期已到，待确认 |
| WBS018 | ECM-2026 | P02 | 制定配置、发布与文档归档规范 | CM | 2026-08-19 | 2026-08-31 | 制定配置、发布与文档归档规范 | 计划完成日期已到，待确认 |
| WBS019 | ECM-2026 | P02 | 完成系统分层、模块与服务边界设计 | TM | 2026-07-01 | 2026-07-15 | 完成系统分层、模块与服务边界设计 | 计划完成日期已到，待确认 |
| WBS020 | ECM-2026 | P02 | 完成主数据、交易数据与分析数据架构 | TM | 2026-07-16 | 2026-07-30 | 完成主数据、交易数据与分析数据架构 | 计划完成日期已到，待确认 |
| WBS021 | ECM-2026 | P02 | 完成内部及外部接口总体架构 | SDEV | 2026-07-31 | 2026-08-15 | 完成内部及外部接口总体架构 | 计划完成日期已到，待确认 |
| WBS022 | ECM-2026 | P02 | 完成身份、权限、审计与数据安全设计 | TM | 2026-08-16 | 2026-08-30 | 完成身份、权限、审计与数据安全设计 | 计划完成日期已到，待确认 |
| WBS023 | ECM-2026 | P02 | 完成环境、网络、容灾和DevOps设计 | CM | 2026-08-31 | 2026-09-14 | 完成环境、网络、容灾和DevOps设计 | 计划完成日期已到，待确认 |
| WBS024 | ECM-2026 | P02 | 汇编总体技术架构并完成基线评审 | TM | 2026-09-15 | 2026-09-30 | 汇编总体技术架构并完成基线评审 | 进行中（待确认） |
| WBS025 | ECM-2026 | P02 | 编制CA、电子文档、BI报表POC方案与评分标准 | TM | 2026-08-15 | 2026-08-19 | 编制CA、电子文档、BI报表POC方案与评分标准 | 计划完成日期已到，待确认 |
| WBS026 | ECM-2026 | P02 | 验证证书签发、身份认证和证书管理 | SDEV | 2026-08-20 | 2026-08-24 | 验证证书签发、身份认证和证书管理 | 计划完成日期已到，待确认 |
| WBS027 | ECM-2026 | P02 | 验证电子签名、验签、时间戳和审计追溯 | QA | 2026-08-25 | 2026-08-29 | 验证电子签名、验签、时间戳和审计追溯 | 计划完成日期已到，待确认 |
| WBS028 | ECM-2026 | P02 | 验证模板生成、在线预览和格式转换 | MDEV | 2026-08-30 | 2026-09-04 | 验证模板生成、在线预览和格式转换 | 计划完成日期已到，待确认 |
| WBS029 | ECM-2026 | P02 | 验证水印、权限控制、归档和大文件性能 | QA | 2026-09-05 | 2026-09-09 | 验证水印、权限控制、归档和大文件性能 | 计划完成日期已到，待确认 |
| WBS030 | ECM-2026 | P02 | 验证数据接入、指标模型和经营报表 | SDEV | 2026-09-10 | 2026-09-14 | 验证数据接入、指标模型和经营报表 | 计划完成日期已到，待确认 |
| WBS031 | ECM-2026 | P02 | 验证权限、钻取、导出和查询性能 | QA | 2026-09-15 | 2026-09-19 | 验证权限、钻取、导出和查询性能 | 进行中（待确认） |
| WBS032 | ECM-2026 | P02 | 汇总问题清单、适配结论和产品选型建议 | PM | 2026-09-20 | 2026-09-25 | 汇总问题清单、适配结论和产品选型建议 | 未开始 |
| WBS033 | ECM-2026 | P03 | 编制并审批项目章程 | PGM | 2026-10-01 | 2026-10-02 | 编制并审批项目章程 | 未开始 |
| WBS034 | ECM-2026 | P03 | 编制范围、里程碑和主进度计划 | PM | 2026-10-03 | 2026-10-05 | 编制范围、里程碑和主进度计划 | 未开始 |
| WBS035 | ECM-2026 | P03 | 建立项目组织、RACI与沟通机制 | PM | 2026-10-06 | 2026-10-08 | 建立项目组织、RACI与沟通机制 | 未开始 |
| WBS036 | ECM-2026 | P03 | 确认30人团队投入与阶段资源计划 | PGM | 2026-10-09 | 2026-10-10 | 确认30人团队投入与阶段资源计划 | 未开始 |
| WBS037 | ECM-2026 | P03 | 建立风险、问题、变更和决策台账 | PM | 2026-10-11 | 2026-10-13 | 建立风险、问题、变更和决策台账 | 未开始 |
| WBS038 | ECM-2026 | P03 | 完成启动条件检查与评审 | PGM | 2026-10-14 | 2026-10-16 | 完成启动条件检查与评审 | 未开始 |
| WBS039 | ECM-2026 | P04 | 准备启动会材料与项目目标宣贯 | PM | 2026-10-20 | 2026-10-20 | 准备启动会材料与项目目标宣贯 | 未开始 |
| WBS040 | ECM-2026 | P04 | 召开项目启动会并确认职责 | PGM | 2026-10-20 | 2026-10-20 | 召开项目启动会并确认职责 | 未开始 |
| WBS041 | ECM-2026 | P04 | 发布会议纪要、行动项和基准计划 | PM | 2026-10-20 | 2026-10-20 | 发布会议纪要、行动项和基准计划 | 未开始 |
| WBS042 | ECM-2026 | P04 | 开展业务场景与用户需求工作坊 | PDM | 2026-10-21 | 2026-10-26 | 开展业务场景与用户需求工作坊 | 未开始 |
| WBS043 | ECM-2026 | P04 | 形成需求清单并完成P0/P1/P2分级 | PDM | 2026-10-27 | 2026-11-02 | 形成需求清单并完成P0/P1/P2分级 | 未开始 |
| WBS044 | ECM-2026 | P04 | 设计目标流程、用例和业务规则 | PDM | 2026-11-03 | 2026-11-09 | 设计目标流程、用例和业务规则 | 未开始 |
| WBS045 | ECM-2026 | P04 | 完成核心功能原型和交互确认 | UI | 2026-11-10 | 2026-11-16 | 完成核心功能原型和交互确认 | 未开始 |
| WBS046 | ECM-2026 | P04 | 明确性能、安全、可用性和合规要求 | TM | 2026-11-17 | 2026-11-23 | 明确性能、安全、可用性和合规要求 | 未开始 |
| WBS047 | ECM-2026 | P04 | 建立需求跟踪矩阵并完成基线评审 | PM | 2026-11-24 | 2026-11-30 | 建立需求跟踪矩阵并完成基线评审 | 未开始 |
| WBS048 | ECM-2026 | P04 | 完成核心模块和服务详细设计 | TM | 2026-11-15 | 2026-11-21 | 完成核心模块和服务详细设计 | 未开始 |
| WBS049 | ECM-2026 | P04 | 完成数据模型、字典和数据质量规则 | SDEV | 2026-11-22 | 2026-11-29 | 完成数据模型、字典和数据质量规则 | 未开始 |
| WBS050 | ECM-2026 | P04 | 完成内部与外部接口详细设计 | SDEV | 2026-11-30 | 2026-12-07 | 完成内部与外部接口详细设计 | 未开始 |
| WBS051 | ECM-2026 | P04 | 完成角色权限、数据权限和审计设计 | TM | 2026-12-08 | 2026-12-15 | 完成角色权限、数据权限和审计设计 | 未开始 |
| WBS052 | ECM-2026 | P04 | 完成核心页面视觉与交互设计 | UI | 2026-12-16 | 2026-12-23 | 完成核心页面视觉与交互设计 | 未开始 |
| WBS053 | ECM-2026 | P04 | 完成设计走查、问题关闭和版本基线 | TM | 2026-12-24 | 2026-12-31 | 完成设计走查、问题关闭和版本基线 | 未开始 |
| WBS054 | ECM-2026 | P04 | 搭建项目工程、公共组件和持续集成 | SDEV | 2026-12-01 | 2026-12-11 | 搭建项目工程、公共组件和持续集成 | 未开始 |
| WBS055 | ECM-2026 | P04 | 开发合同模板、范本和条款库管理 | MDEV | 2026-12-12 | 2026-12-23 | 开发合同模板、范本和条款库管理 | 未开始 |
| WBS056 | ECM-2026 | P04 | 开发合同拟稿、协同编辑和版本管理 | MDEV | 2026-12-24 | 2027-01-04 | 开发合同拟稿、协同编辑和版本管理 | 未开始 |
| WBS057 | ECM-2026 | P04 | 开发合同审查、审批和用印流程 | SDEV | 2027-01-05 | 2027-01-15 | 开发合同审查、审批和用印流程 | 未开始 |
| WBS058 | ECM-2026 | P04 | 开发签署状态、签章和合同生效管理 | SDEV | 2027-01-16 | 2027-01-27 | 开发签署状态、签章和合同生效管理 | 未开始 |
| WBS059 | ECM-2026 | P04 | 开发履约计划、交付、验收和预警 | MDEV | 2027-01-28 | 2027-02-08 | 开发履约计划、交付、验收和预警 | 未开始 |
| WBS060 | ECM-2026 | P04 | 开发应收应付、开票和付款计划 | MDEV | 2027-02-09 | 2027-02-19 | 开发应收应付、开票和付款计划 | 未开始 |
| WBS061 | ECM-2026 | P04 | 开发变更、解除、终止和电子归档 | MDEV | 2027-02-20 | 2027-03-03 | 开发变更、解除、终止和电子归档 | 未开始 |
| WBS062 | ECM-2026 | P04 | 开发合同检索、台账和经营分析页面 | MDEV | 2027-03-04 | 2027-03-15 | 开发合同检索、台账和经营分析页面 | 未开始 |
| WBS063 | ECM-2026 | P04 | 制定端到端集成场景和测试数据 | TM | 2027-02-01 | 2027-02-06 | 制定端到端集成场景和测试数据 | 未开始 |
| WBS064 | ECM-2026 | P04 | 贯通合同起草、审批、签署和生效流程 | SDEV | 2027-02-07 | 2027-02-12 | 贯通合同起草、审批、签署和生效流程 | 未开始 |
| WBS065 | ECM-2026 | P04 | 贯通履约、收付款、变更和归档流程 | SDEV | 2027-02-13 | 2027-02-19 | 贯通履约、收付款、变更和归档流程 | 未开始 |
| WBS066 | ECM-2026 | P04 | 验证主数据、权限和审计数据流 | QA | 2027-02-20 | 2027-02-25 | 验证主数据、权限和审计数据流 | 未开始 |
| WBS067 | ECM-2026 | P04 | 验证异常补偿、重试和一致性处理 | SDEV | 2027-02-26 | 2027-03-03 | 验证异常补偿、重试和一致性处理 | 未开始 |
| WBS068 | ECM-2026 | P04 | 完成内部集成回归并出具报告 | QA | 2027-03-04 | 2027-03-10 | 完成内部集成回归并出具报告 | 未开始 |
| WBS069 | ECM-2026 | P04 | 确认外部系统清单、接口规范和联调计划 | TM | 2027-02-15 | 2027-02-18 | 确认外部系统清单、接口规范和联调计划 | 未开始 |
| WBS070 | ECM-2026 | P04 | 完成ERP及主数据接口联调 | SDEV | 2027-02-19 | 2027-02-23 | 完成ERP及主数据接口联调 | 未开始 |

| wbs_id | project_id | phase_id | task_name | owner_role | planned_start | planned_finish | deliverable | status |
| --- | --- | --- | --- | --- | --- | --- | --- | --- |
| WBS071 | ECM-2026 | P04 | 完成财务、开票和收付款接口联调 | SDEV | 2027-02-24 | 2027-02-28 | 完成财务、开票和收付款接口联调 | 未开始 |
| WBS072 | ECM-2026 | P04 | 完成OA待办、审批和消息接口联调 | MDEV | 2027-03-01 | 2027-03-05 | 完成OA待办、审批和消息接口联调 | 未开始 |
| WBS073 | ECM-2026 | P04 | 完成电子签章、CA和时间戳接口联调 | SDEV | 2027-03-06 | 2027-03-10 | 完成电子签章、CA和时间戳接口联调 | 未开始 |
| WBS074 | ECM-2026 | P04 | 验证对账、幂等、补偿和监控机制 | QA | 2027-03-11 | 2027-03-15 | 验证对账、幂等、补偿和监控机制 | 未开始 |
| WBS075 | ECM-2026 | P04 | 完成外部系统联合测试并出具报告 | TM | 2027-03-16 | 2027-03-20 | 完成外部系统联合测试并出具报告 | 未开始 |
| WBS076 | ECM-2026 | P04 | 编制系统测试计划、用例和测试数据 | QA | 2027-03-01 | 2027-03-07 | 编制系统测试计划、用例和测试数据 | 未开始 |
| WBS077 | ECM-2026 | P04 | 完成P0/P1功能与业务规则测试 | QA | 2027-03-08 | 2027-03-15 | 完成P0/P1功能与业务规则测试 | 未开始 |
| WBS078 | ECM-2026 | P04 | 完成内部外部接口及端到端回归 | QA | 2027-03-16 | 2027-03-23 | 完成内部外部接口及端到端回归 | 未开始 |
| WBS079 | ECM-2026 | P04 | 完成性能、安全、兼容性和可靠性测试 | QA | 2027-03-24 | 2027-03-30 | 完成性能、安全、兼容性和可靠性测试 | 未开始 |
| WBS080 | ECM-2026 | P04 | 完成阻断及严重缺陷修复和复测 | SDEV | 2027-03-31 | 2027-04-07 | 完成阻断及严重缺陷修复和复测 | 未开始 |
| WBS081 | ECM-2026 | P04 | 汇总覆盖率、缺陷和质量结论并评审 | QA | 2027-04-08 | 2027-04-15 | 汇总覆盖率、缺陷和质量结论并评审 | 未开始 |
| WBS082 | ECM-2026 | P04 | 确认UAT场景、用户、数据和验收安排 | PDM | 2027-04-16 | 2027-04-21 | 确认UAT场景、用户、数据和验收安排 | 未开始 |
| WBS083 | ECM-2026 | P04 | 组织业务用户执行P0场景验收 | PDM | 2027-04-22 | 2027-04-27 | 组织业务用户执行P0场景验收 | 未开始 |
| WBS084 | ECM-2026 | P04 | 修复UAT问题并完成业务回归 | SDEV | 2027-04-28 | 2027-05-03 | 修复UAT问题并完成业务回归 | 未开始 |
| WBS085 | ECM-2026 | P04 | 形成UAT报告、遗留事项和确认单 | PM | 2027-05-04 | 2027-05-10 | 形成UAT报告、遗留事项和确认单 | 未开始 |
| WBS086 | ECM-2026 | P04 | 完成生产部署、发布和回退方案 | CM | 2027-05-11 | 2027-05-12 | 完成生产部署、发布和回退方案 | 未开始 |
| WBS087 | ECM-2026 | P04 | 完成数据迁移、清洗和对账演练 | SDEV | 2027-05-13 | 2027-05-14 | 完成数据迁移、清洗和对账演练 | 未开始 |
| WBS088 | ECM-2026 | P04 | 核查接口、权限、证书和配置参数 | TM | 2027-05-15 | 2027-05-17 | 核查接口、权限、证书和配置参数 | 未开始 |
| WBS089 | ECM-2026 | P04 | 建立监控、告警、备份和支持机制 | CM | 2027-05-18 | 2027-05-19 | 建立监控、告警、备份和支持机制 | 未开始 |
| WBS090 | ECM-2026 | P04 | 完成用户培训、手册和运维交接 | PDM | 2027-05-20 | 2027-05-21 | 完成用户培训、手册和运维交接 | 未开始 |
| WBS091 | ECM-2026 | P04 | 执行上线检查表并获得上线批准 | PGM | 2027-05-22 | 2027-05-24 | 执行上线检查表并获得上线批准 | 未开始 |
| WBS092 | ECM-2026 | P05 | 执行生产部署、数据切换和版本发布 | CM | 2027-05-31 | 2027-05-31 | 执行生产部署、数据切换和版本发布 | 未开始 |
| WBS093 | ECM-2026 | P05 | 执行生产冒烟和关键业务链路验证 | QA | 2027-05-31 | 2027-05-31 | 执行生产冒烟和关键业务链路验证 | 未开始 |
| WBS094 | ECM-2026 | P05 | 启动监控、问题响应和试运行支持 | TM | 2027-05-31 | 2027-05-31 | 启动监控、问题响应和试运行支持 | 未开始 |
| WBS095 | ECM-2026 | P05 | 形成上线确认单和试运行跟踪计划 | PM | 2027-05-31 | 2027-05-31 | 形成上线确认单和试运行跟踪计划 | 未开始 |
