| wbs_id | phase_id | task_name | owner_role | planned_start | planned_finish | deliverable | dependency |
| --- | --- | --- | --- | --- | --- | --- | --- |
| 1.1 | P01 | 制定可研工作方案 | PM | 2026-02-01 | 2026-02-10 | 可研工作方案 |  |
| 1.2 | P01 | 开展业务与管理访谈 | PDM | 2026-02-11 | 2026-03-20 | 访谈纪要与需求线索 | 1.1 |
| 1.3 | P01 | 完成项目可行性分析 | PGM | 2026-03-01 | 2026-09-18 | 项目可行性研究报告 | 1.1 |
| 1.4 | P01 | 梳理原合同业务流程 | PDM | 2026-03-16 | 2026-05-31 | 现状流程清单 | 1.2 |
| 1.5 | P01 | 形成问题与改进机会基线 | PDM | 2026-05-01 | 2026-06-30 | 问题及改进机会清单 | 1.3,1.4 |
| 2.1 | P02 | 制定项目治理与管理规范 | PM | 2026-07-01 | 2026-08-31 | 项目管理规范 | 1.5 |
| 2.2 | P02 | 制定需求、研发、测试和配置规范 | TM | 2026-07-15 | 2026-09-15 | 研发过程规范 | 1.5 |
| 2.3 | P02 | 设计总体技术架构 | TM | 2026-07-01 | 2026-09-15 | 总体技术架构 | 1.3 |
| 2.4 | P02 | 搭建开发测试与配置基础 | CM | 2026-08-01 | 2026-09-30 | 基础环境及流水线 | 2.3 |
| 3.1 | P03 | 编制项目章程和总体实施计划 | PM | 2026-10-01 | 2026-10-12 | 项目章程与总体实施计划 | 2.1,2.3 |
| 3.2 | P03 | 确认项目组织、资源和治理节奏 | PGM | 2026-10-01 | 2026-10-16 | 组织职责与沟通机制 | 2.1 |
| 3.3 | P03 | 准备启动会与首批迭代 | PM | 2026-10-10 | 2026-10-19 | 启动会材料与迭代清单 | 3.1,3.2 |
| 4.1 | P04 | 项目正式启动 | PGM | 2026-10-20 | 2026-10-20 | 启动会纪要 | 3.3 |
| 4.2 | P04 | 详细需求分析与原型确认 | PDM | 2026-10-21 | 2026-11-30 | 需求规格说明书、原型和跟踪矩阵 | 4.1 |
| 4.3 | P04 | 详细设计与接口数据设计 | TM | 2026-11-15 | 2026-12-31 | 详细设计、接口和数据设计 | 4.2 |
| 4.4 | P04 | 合同起草审批与模板功能开发 | SDEV | 2026-12-01 | 2027-02-15 | 合同起草审批与模板模块 | 4.2 |
| 4.5 | P04 | 履约、收付款与变更功能开发 | SDEV | 2026-12-15 | 2027-03-01 | 履约、收付款与变更模块 | 4.2 |
| 4.6 | P04 | 电子签章、ERP、财务和OA集成开发 | SDEV | 2027-01-01 | 2027-03-15 | 集成接口与联调版本 | 4.3 |
| 4.7 | P04 | 历史合同数据治理与迁移准备 | MDEV | 2027-01-15 | 2027-04-15 | 数据清洗规则、迁移程序和对账方案 | 4.3 |
| 4.8 | P04 | 系统测试与安全性能验证 | QA | 2027-03-01 | 2027-04-15 | 系统测试报告 | 4.4,4.5,4.6 |
| 4.9 | P04 | 业务UAT与问题整改 | PDM | 2027-04-16 | 2027-05-10 | UAT报告与确认单 | 4.8 |
| 4.10 | P04 | 培训、运维移交和上线演练 | PM | 2027-04-20 | 2027-05-24 | 培训材料、运维手册和演练报告 | 4.8 |
| 4.11 | P04 | 上线准入评审与生产准备 | PGM | 2027-05-11 | 2027-05-30 | 上线检查表与批准记录 | 4.9,4.10 |
| 5.1 | P05 | 生产发布与上线验证 | TM | 2027-05-31 | 2027-05-31 | 上线确认单 | 4.11 |
| 5.2 | P05 | 试运行支持与缺陷闭环 | PM | 2027-05-31 | 2027-06-30 | 试运行报告与遗留问题清单 | 5.1 |
